# תוכנית עבודה - גאנט

Schedule from MS Project, 2009-05-04 to 2010-07-02, A marks actual dates.

## Calendars

- לוח שנה: Mon-Thu 17:00-23:59; Fri 08:00-12:00, 13:00-17:00; Sat off; Sun 17:00-23:59.

## Resources

| Resource |
| --- |
| מנהל פרוייקט |
| מחקר |
| מנתח |
| תמיכה |
| מתעד |
| מתכנת |
| בודק |

## Schedule

| ID | WBS | Task | Type | Duration | Start | Finish | Predecessors | Complete | Remaining | Total slack | Constraint | Deadline | Resources | Work | Actual work |
| --- | --- | --- | --- | --- | --- | --- | --- | --- | --- | --- | --- | --- | --- | --- | --- |
| 1 | 1 | **סוכן רשת אוטומטי** |  | 326.27d? | 2009-05-04 A | 2010-07-02 |  | 87% | 41.92d? | 0d |  |  |  | 134h | 134h |
| 2 | 1.1 | **כתיבת הצעת פרוייקט** |  | 16.97d? | 2009-05-04 A | 2009-05-26 A |  | 100% |  |  |  |  |  | 134h | 134h |
| 3 | 1.1.1 | הגדרת מטרות ויעדים |  | 2h? | 2009-05-04 A | 2009-05-04 A |  | 100% |  |  |  |  | מנהל פרוייקט | 2h | 2h |
| 4 | 1.1.2 | סקירה ספרותית |  | 1d? | 2009-05-04 A | 2009-05-05 A | 3 | 100% |  |  |  |  | מחקר | 8h | 8h |
| 5 | 1.1.3 | סקירת מצב קיים |  | 1d? | 2009-05-05 A | 2009-05-06 A | 4 | 100% |  |  |  |  | מחקר | 8h | 8h |
| 6 | 1.1.4 | **כתיבת מסך דרישות ראשוני ותיחום של המערכת** |  | 7.36d? | 2009-05-06 A | 2009-05-15 A |  | 100% |  |  |  |  |  | 56h | 56h |
| 7 | 1.1.4.1 | גורמי הפרוייקט |  | 0.5d | 2009-05-06 A | 2009-05-06 A | 5 | 100% |  |  |  |  | מנהל פרוייקט | 4h | 4h |
| 8 | 1.1.4.2 | אילוצי הפרוייקט |  | 0.5d | 2009-05-06 A | 2009-05-07 A | 7 | 100% |  |  |  |  | מנהל פרוייקט | 4h | 4h |
| 9 | 1.1.4.3 | דרישות פונקציונאליות |  | 1d? | 2009-05-07 A | 2009-05-08 A | 8 | 100% |  |  |  |  | מנתח | 8h | 8h |
| 10 | 1.1.4.4 | דרישות לא פונקציונאליות |  | 1d? | 2009-05-08 A | 2009-05-11 A | 9 | 100% |  |  |  |  | מנתח | 8h | 8h |
| 11 | 1.1.4.5 | נושאי הפרוייקט |  | 0.5d | 2009-05-11 A | 2009-05-11 A | 10 | 100% |  |  |  |  | מנתח | 4h | 4h |
| 12 | 1.1.4.6 | העברת המערכת לידי הלקוח |  | 0.5d | 2009-05-11 A | 2009-05-12 A | 11 | 100% |  |  |  |  | תמיכה | 4h | 4h |
| 13 | 1.1.4.7 | הערכת סיכונים |  | 0.5d | 2009-05-12 A | 2009-05-12 A | 12 | 100% |  |  |  |  | מנהל פרוייקט | 4h | 4h |
| 14 | 1.1.4.8 | הערכת עלויות |  | 0.5d | 2009-05-12 A | 2009-05-13 A | 13 | 100% |  |  |  |  | מנהל פרוייקט | 4h | 4h |
| 15 | 1.1.4.9 | תוכנית תיעוד |  | 0.5d | 2009-05-13 A | 2009-05-13 A | 14 | 100% |  |  |  |  | מתעד | 4h | 4h |
| 16 | 1.1.4.10 | תוכנית דרישות לדור הבא |  | 0.5d | 2009-05-13 A | 2009-05-14 A | 15 | 100% |  |  |  |  | מנתח | 4h | 4h |
| 17 | 1.1.4.11 | חשיבה על רעיונות לפתרון |  | 1d? | 2009-05-14 A | 2009-05-15 A | 16 | 100% |  |  |  |  | מחקר | 8h | 8h |
| 18 | 1.1.5 | ניתוח פונקציונאלי ראשוני |  | 1d? | 2009-05-15 A | 2009-05-18 A | 17 | 100% |  |  |  |  | מנתח | 8h | 8h |
| 19 | 1.1.6 | ניתוח חלופוןת מערכתי ראשוני |  | 1d? | 2009-05-18 A | 2009-05-19 A | 18 | 100% |  |  |  |  | מנתח | 8h | 8h |
| 20 | 1.1.7 | תאור דרך הביצוע המתוכנן |  | 1d? | 2009-05-19 A | 2009-05-20 A | 19 | 100% |  |  |  |  | מנתח | 8h | 8h |
| 21 | 1.1.8 | הערכת הכלים/האמצעים הנדרשים |  | 0.5d | 2009-05-20 A | 2009-05-20 A | 20 | 100% |  |  |  |  | מתכנת | 4h | 4h |
| 22 | 1.1.9 | **הערכת והשלמת פערי ידע** |  | 2.5d? | 2009-05-20 A | 2009-05-22 A |  | 100% |  |  |  |  |  | 16h | 16h |
| 23 | 1.1.9.1 | לימוד mshtml.dll |  | 1d? | 2009-05-20 A | 2009-05-21 A | 21 | 100% |  |  |  |  | מחקר | 8h | 8h |
| 24 | 1.1.9.2 | התממשקות לדפדפן |  | 1d? | 2009-05-21 A | 2009-05-22 A | 23 | 100% |  |  |  |  | מחקר | 8h | 8h |
| 25 | 1.1.10 | תכנית בדיקות ראשונית |  | 1d? | 2009-05-22 A | 2009-05-25 A | 24 | 100% |  |  |  |  | בודק | 8h | 8h |
| 26 | 1.1.11 | WBS |  | 1d? | 2009-05-25 A | 2009-05-26 A | 25 | 100% |  |  |  |  | מנהל פרוייקט | 8h | 8h |
| 27 | 1.1.12 | הגשת ההצעה | milestone | 0d | 2009-05-26 A | 2009-05-26 A | 26 | 100% |  |  | finish no later than 2009-05-27 | 2009-05-27 |  |  |  |

| ID | WBS | Task | Duration | Start | Finish | Predecessors | Complete | Remaining | Total slack | Free slack | Constraint | Deadline |
| --- | --- | --- | --- | --- | --- | --- | --- | --- | --- | --- | --- | --- |
| 28 | 1.2 | **דו"ח ביניים 1** | 74d | 2009-05-26 A | 2009-08-30 A |  | 100% |  |  |  |  | 2009-09-01 |
| 29 | 1.2.1 | מחקר על סוכנים אוטומטיים | 4d | 2009-05-26 A | 2009-05-31 A | 27 | 100% |  |  |  |  |  |
| 30 | 1.2.2 | כתיבת מסמך SRD | 35d | 2009-05-31 A | 2009-07-15 A | 29 | 100% |  |  |  |  |  |
| 31 | 1.2.3 | עדכון דרישות בהתאם למחקר שנעשה עד כה | 35d | 2009-07-15 A | 2009-08-30 A | 30 | 100% |  |  |  |  |  |
| 32 | 1.3 | **דו"ח ביניים 2** | 147.02d | 2009-08-30 A | 2010-03-10 A | 31 | 100% |  |  |  |  | 2009-12-24 |
| 33 | 1.3.1 | תיקון דרישות פונקציונליות | 3d | 2009-08-30 A | 2009-09-03 A |  | 100% |  |  |  |  |  |
| 34 | 1.3.2 | חלוקת הפרוייקט למודולים ניתנים לתכנות | 3d | 2009-09-03 A | 2009-09-07 A | 33 | 100% |  |  |  |  |  |
| 35 | 1.3.3 | פיתוח קוד אבטיפוס | 38d | 2009-09-07 A | 2009-10-26 A | 34 | 100% |  |  |  |  |  |
| 36 | 1.3.4 | דיבוג ובדיקות פיתוח אבטיפוס | 71.51d | 2009-10-26 A | 2010-01-28 A | 35 | 100% |  |  |  | finish no earlier than 2010-01-27 |  |
| 37 | 1.3.5 | עדכון לוחות זמנים ודרישות | 34.51d | 2009-12-14 A | 2010-03-10 A | 36 | 100% |  |  |  | finish no earlier than 2010-01-27 |  |
| 38 | 1.4 | **דו"ח סופי** | 88.29d | 2010-03-10 A | 2010-07-02 | 32 | 65% | 31.12d | 0d |  |  |  |
| 39 | 1.4.1 | פיתוח קוד | 31d | 2010-03-10 A | 2010-04-19 | 37 | 80% | 6.2d | 24.77d | 0d | start no earlier than 2008-12-16 |  |
| 40 | 1.4.2 | דיבוג ובדיקות פיתוח | 41.29d | 2010-04-19 A | 2010-06-11 | 39 | 60% | 16.52d | 0d |  |  |  |
| 41 | 1.4.3 | ניתוח ביצועי המערכת | 16d | 2010-06-13 | 2010-07-02 | 40 |  |  | 0d |  |  |  |
| 42 | 1.4.4 | כתיבת ספר פרוייקט | 49.83d | 2010-03-28 A | 2010-05-31 | 37 | 80% | 9.97d | 0d |  | finish no earlier than 2010-05-31 | 2010-05-31 |
